# WeKeBA

Schedule from MS Project, 2014-09-01 to 2014-09-02.
ZHAW

## Calendars

- Standard: Mon-Tue 08:00-12:00, 13:00-17:00; Wed-Sun off.

## Resources

| Resource |
| --- |
| Tobias Keller |
| Tobias Welti |

## Schedule

| ID | Task | Duration | Start | Finish | Predecessors | Total slack | Free slack | Resources | Work |
| --- | --- | --- | --- | --- | --- | --- | --- | --- | --- |
| 1 | Sensor anschliessen | 4h | 2014-09-01 08:00 | 2014-09-01 12:00 |  | 0d |  |  |  |
| 2 | A/D-Wandlung getaktet | 6h | 2014-09-01 13:00 | 2014-09-02 10:00 | 1 | 0d |  | Tobias Keller [40%] | 2.4h |
| 3 | CAN-Bus in Betrieb nehmen | 4h | 2014-09-01 08:00 | 2014-09-01 12:00 |  | 1.5d |  | Tobias Keller [40%]; Tobias Welti [40%] | 3.2h |
| 4 | Ereigniserkennung | 6h | 2014-09-02 10:00 | 2014-09-02 17:00 | 2 | 0d |  | Tobias Welti [40%] | 2.4h |
| 5 | Speicherkonzept Sensoreinheit | 4h | 2014-09-01 08:00 | 2014-09-01 12:00 |  | 1.5d |  |  |  |
| 6 | Busprotokoll | 12h | 2014-09-01 13:00 | 2014-09-02 17:00 | 10 | 0d |  |  |  |
| 7 | Tester | 12h | 2014-09-01 08:00 | 2014-09-02 12:00 |  | 0.5d |  |  |  |
| 8 | Filesystem | 4h | 2014-09-01 13:00 | 2014-09-01 17:00 | 10 | 0.25d | 0d |  |  |
| 9 | Speicherkonzept Datenlogger | 6h | 2014-09-02 08:00 | 2014-09-02 15:00 | 8 | 0.25d |  |  |  |
| 10 | Timestamp | 4h | 2014-09-01 08:00 | 2014-09-01 12:00 |  | 0d |  |  |  |
| 11 | UART-Kommandozeile | 8h | 2014-09-01 08:00 | 2014-09-01 17:00 |  | 1d |  |  |  |
| 12 | PCB Konzept | 2h | 2014-09-01 08:00 | 2014-09-01 10:00 |  | 0.5d | 0d |  |  |
| 13 | PCB Schaltplan | 3h | 2014-09-01 10:00 | 2014-09-01 14:00 | 12 | 0.5d | 0d |  |  |
| 14 | PCB Layout | 1h | 2014-09-01 14:00 | 2014-09-01 15:00 | 13 | 0.5d | 0d |  |  |
| 15 | PCB Löten | 4h | 2014-09-01 15:00 | 2014-09-02 10:00 | 14 | 0.75d |  |  |  |
| 16 | Gehäuse | 6h | 2014-09-01 15:00 | 2014-09-02 12:00 | 14 | 0.5d |  |  |  |
| 17 | Pflichtenheft | 6h | 2014-09-01 08:00 | 2014-09-01 15:00 |  | 0.25d | 0d | Tobias Welti [40%] | 2.4h |
| 18 | Konzept | 8h | 2014-09-01 15:00 | 2014-09-02 15:00 | 17 | 0.25d |  | Tobias Welti [40%] | 3.2h |
